# Homebase GiG

Schedule from GanttProject, 2013-03-18 to 2013-05-07.
Homebase
Holidays every year on 01-01, 12-25, 12-26

## Calendars

- Project calendar: Mon-Fri working; Sat-Sun off. Exceptions (off unless hours are given): 2013-03-29, 2013-04-01.

## Resources

| Resource |
| --- |
| Jeremy |
| Andrew |
| Client |
| Dave |
| Zia |

## Schedule

| ID | WBS | Task | Type | Duration | Start | Finish | Predecessors | Resources |
| --- | --- | --- | --- | --- | --- | --- | --- | --- |
| 1 | 1 | Project Build Starts | milestone | 0d | 2013-03-18 | 2013-03-18 |  |  |
| 2 | 2 | **GRAPHIC DESIGN** |  | 4d | 2013-03-18 | 2013-03-21 |  |  |
| 3 | 2.1 | Develop Graphic Designs |  | 2d | 2013-03-18 | 2013-03-19 | 1 | Andrew |
| 4 | 2.2 | Feedback and Amends |  | 2d | 2013-03-20 | 2013-03-21 | 3 | Client [50%] |
| 5 | 2.3 | Graphic Designs Complete | milestone | 0d | 2013-03-22 | 2013-03-22 | 4 |  |
| 6 | 3 | **BUILD** |  | 6d | 2013-03-22 | 2013-04-02 | 5 |  |
| 7 | 3.1 | Set-up app on heroku |  | 1d | 2013-03-22 | 2013-03-22 |  | Jeremy |
| 8 | 3.2 | Set up facebook app |  | 1d | 2013-03-22 | 2013-03-22 |  | Jeremy |
| 9 | 3.3 | Create test data |  | 1d | 2013-03-22 | 2013-03-22 |  | Jeremy |
| 10 | 3.4 | Gather required resources including sample CSV file |  | 1d | 2013-03-22 | 2013-03-22 |  | Jeremy |
| 11 | 3.5 | Sample CSV file delivered | milestone | 0d | 2013-03-25 | 2013-03-25 | 10 | Client |
| 12 | 3.6 | Create YT image |  | 1d | 2013-03-22 | 2013-03-22 | 5 | Dave |
| 13 | 3.7 | Build HTML5 page template and create structure |  | 1d | 2013-03-25 | 2013-03-25 | 11 | Jeremy |
| 14 | 3.8 | Establish logical and system design from requirements |  | 1d | 2013-03-25 | 2013-03-25 | 11 | Jeremy; Andrew; Zia |
| 15 | 3.9 | Build CSV to HTML processor |  | 2d | 2013-03-26 | 2013-03-27 | 14 | Jeremy |
| 16 | 3.10 | Build search and highlight function |  | 1d | 2013-03-28 | 2013-03-28 | 15 | Jeremy |
| 17 | 3.11 | Build collage outer frame GIG |  | 1d | 2013-04-02 | 2013-04-02 | 16 | Jeremy |
| 18 | 3.12 | Build collage outer frame FB |  | 1d | 2013-04-02 | 2013-04-02 | 16 | Jeremy |
| 19 | 3.13 | Build Complete | milestone | 0d | 2013-04-03 | 2013-04-03 | 18 |  |
| 20 | 4 | **TEST** |  | 2d | 2013-04-03 | 2013-04-04 | 19 |  |
| 21 | 4.1 | Test logic and rendering across various platforms |  | 1d | 2013-04-03 | 2013-04-03 |  | Jeremy |
| 22 | 4.2 | Feedback and Amends |  | 1d | 2013-04-04 | 2013-04-04 | 21 | Jeremy; Client |
| 23 | 4.3 | Testing complete | milestone | 0d | 2013-04-05 | 2013-04-05 | 22 |  |
| 24 | 5 | **DELIVER/DEPLOY** |  | 1d | 2013-04-05 | 2013-04-05 | 23 |  |
| 25 | 5.1 | Handover iFrame code |  | 1d | 2013-04-05 | 2013-04-05 |  | Jeremy |
| 26 | 5.2 | Upload and process latest CSV |  | 1d | 2013-04-05 | 2013-04-05 |  | Jeremy; Client |
| 27 | 5.3 | Deliver YT image |  | 1d | 2013-04-05 | 2013-04-05 |  | Jeremy |
| 28 | 5.4 | DELIVERY COMPLETE | milestone | 0d | 2013-04-08 | 2013-04-08 | 25, 26, 27 |  |

| ID | WBS | Task | Duration | Start | Finish | Predecessors | Resources |
| --- | --- | --- | --- | --- | --- | --- | --- |
| 29 | 6 | **MAINTAIN** | 16d | 2013-04-16 | 2013-05-07 | 28 |  |
| 30 | 6.1 | Upload and process latest CSV week1 | 1d | 2013-04-16 | 2013-04-16 |  | Jeremy; Client |
| 31 | 6.2 | Upload and process latest CSV week2 | 1d | 2013-04-23 | 2013-04-23 |  |  |
| 32 | 6.3 | Upload and process latest CSV week3 | 1d | 2013-04-30 | 2013-04-30 |  |  |
| 33 | 6.4 | Upload and process latest CSV week4 | 1d | 2013-05-07 | 2013-05-07 |  |  |
